How a schedule from MS Project XML changed from version to version. A marks actual dates.

## Version 1 (saved 2026-06-24)

Note of the change: Fix: mark task as completed (100%) in project plan XML

| ID | WBS | Task | Duration | Start | Finish | Predecessors | Complete | Total float | Constraint |
| --- | --- | --- | --- | --- | --- | --- | --- | --- | --- |
| 1 | 1 | **AI ТРАНСФОРМАЦИЯ SQB** | 339.88d? | 2026-01-05 A | 2027-04-23 |  | 13% |  |  |
| 2 | 1.1 | **ДАННЫЕ** | 322.88d? | 2026-01-05 A | 2027-03-31 |  | 19% | 17d |  |
| 3 | 1.1.1 | **Финализация стратегии управления данными** | 111.88d | 2026-01-05 A | 2026-06-09 |  | 100% | 0d |  |
| 4 |  | Разработка содержания стратегии управления данными (GlowBite) | 80.88d | 2026-01-05 A | 2026-04-27 A |  | 100% |  | finish no earlier than 2026-04-27 |
| 5 |  | Финализация стратегии управления данными (GlowBite) | 49.88d | 2026-04-01 A | 2026-06-09 A | 4 | 100% |  |  |
| 6 |  | Создание архитектуры Корпоративной модели данных Datalake | 22.88d | 2026-05-04 A | 2026-06-03 A | 4 | 100% |  | finish no earlier than 2026-05-15 |
| 7 | 1.1.2 | **Создание общего Datalаke и корпоративной модели данных и витрин – ключевой проект.** | 197.88d? | 2026-04-01 A | 2027-01-01 |  | 17% | 79d |  |
| 8 |  | Определить источники наполнения Корпоративной модели данных: внутренних, внешних открытых, внешних ограниченных, неструктурированных. | 17d | 2026-04-15 A | 2026-05-07 A |  | 100% |  |  |
| 9 |  | Определить состав и технический стек КМД | 4.5d | 2026-04-01 A | 2026-04-07 A |  | 100% |  |  |
| 10 |  | Решение о ресурсах реализации (внутренние/внешние/подрядчики/тендер) | 5d | 2026-04-08 A | 2026-04-15 A | 9 | 100% |  | finish no earlier than 2026-04-15 |
| 11 |  | Проведение тендера по выбору исполнителя, утверждение задачи | 35d | 2026-06-15 | 2026-08-03 | 10 |  | 112d | finish no earlier than 2026-08-03 |
| 12 |  | Реализация DataLake: MVP | 75d | 2026-09-17 | 2026-12-31 | 11 |  | 79d | finish no earlier than 2026-12-31 |
| 13 |  | Пилотирование, результаты | 20d | 2026-12-03 | 2026-12-31 | 12FF |  | 79d |  |
| 14 |  | DataLake готов в объёме MVP | 1d? | 2026-12-31 | 2027-01-01 | 13 |  | 79d |  |
| 15 | 1.1.3 | **Создание в рамках DataLake платформы работы со структурированными и неструктурированными данными.** | 228d? | 2026-04-27 A | 2027-03-11 |  | 7% | 30d |  |
| 16 |  | Определить состав и технический стек SQB.Data | 5d | 2026-04-27 A | 2026-05-04 A | 4, 9 | 100% |  |  |
| 17 |  | Решение о ресурсах реализации (внутренние/внешние/подрядчики/тендер) | 5d | 2026-05-04 A | 2026-05-11 A | 16 | 100% |  |  |
| 18 |  | Проведение тендера по выбору исполнителя, утверждение задачи | 47d | 2026-05-11 | 2026-07-15 | 17 |  | 125d |  |
| 19 |  | Реализация SQB.Data: MVP | 75d | 2026-11-25 | 2027-03-10 | 18 |  | 30d | finish no earlier than 2027-03-10 |
| 20 |  | Пилотирование, результаты | 7d | 2027-03-01 | 2027-03-10 | 19FF |  | 30d |  |
| 21 |  | SQB.Data готова в объёме MVP | 1d? | 2027-03-10 | 2027-03-11 | 13, 20 |  | 30d |  |
| 22 |  | Разработка и внедрение комлпекса метрик управления даннными | 75d | 2026-09-17 | 2026-12-31 | 12FF |  | 81d |  |
| 23 |  | Интеграция описания данных с базой знаний | 75d | 2026-09-17 | 2026-12-31 | 12FF |  | 81d |  |
| 24 | 1.1.6 | **Создание ролевой модели в Банке** | 190.88d | 2026-06-08 | 2027-03-01 |  |  | 0d |  |
| 25 |  | Картирование ролевой модели | 60.88d | 2026-06-08 | 2026-08-31 | 118 |  |  |  |
| 26 |  | Создать ролевую модель для работы с данными внутри Банка для ухода от персонифицированных доступов. | 15d | 2026-11-25 | 2026-12-16 | 12SS, 19SS, 25 |  | 15d |  |
| 27 |  | Организовать процедуры доступа в соответствии с ролевой моделью | 25d | 2026-12-16 | 2027-01-20 | 26 |  | 53d |  |
| 28 |  | Расширение ролевой модели на ИТ-окружение Банка | 14d | 2027-02-09 | 2027-03-01 | 27 |  | 39d | finish no earlier than 2027-03-01 |
| 29 |  | Организовать процедуры обогащения хранилища за счёт новых источников данных внутри Банка и процедуры импорта внешних данных. | 60d | 2026-11-25 | 2027-02-17 | 12SS, 19SS, 25 |  | -12.38d |  |
| 30 |  | Организовать процедуры защиты персональных и конфиденциальных данных в соответствии с ролевой моделью. | 60d | 2026-11-25 | 2027-02-17 | 12SS, 19SS, 25 |  | 47d |  |
| 31 |  | Создать в подразделениях, SQB.AI и SQB.Data роли data-инженера и data-аналитика. | 30d | 2026-11-25 | 2027-01-06 | 12SS, 19SS, 25 |  | 30d | finish no earlier than 2026-12-31 |
| 32 |  | Каскадировать ролевую модель на потребление инфраструктуры | 30d | 2026-12-16 | 2027-01-27 | 12SS, 19SS, 25, 26 |  | 15d |  |
| 33 |  | Каскадировать ролевую модель на доступы к АС | 59.38d | 2026-10-09 | 2026-12-31 | 29, 25, 26 |  |  |  |
| 34 |  | Организовать подбор, найм и развитие дата-инженеров. | 45d | 2027-01-27 | 2027-03-31 | 31, 32 |  | 15d | finish no earlier than 2027-03-01 |
| 35 |  | Ролевая модель запущена | 1d? | 2026-10-12 | 2026-10-12 | 34, 32 |  |  |  |
| 36 |  | DataLake, SQB.Data и ролевая модель готовы в объёме MVP | 1d? | 2026-11-30 | 2026-12-01 | 35, 21, 14 |  |  |  |
| 37 | 1.2 | **ИНФРАСТРУКТУРА** | 244d? | 2026-04-06 A | 2027-03-12 |  | 5% | 30d |  |
| 38 |  | Определить объёмы и сроки потребления инфраструктурных потребностей на 2026 год. | 84d | 2026-04-06 A | 2026-07-31 |  | 15% | 0d | finish no earlier than 2026-07-31 |
| 39 |  | Провести при необходимости бюджетные корректировки бизнес-плана. | 15d | 2026-05-11 A | 2026-08-12 | 38 | 50% | 182.5d |  |
| 40 |  | Разработать механизм бюджетирования, учёта и управления утилизацией мощностей | 15d | 2026-07-31 | 2026-08-21 | 38 |  | 175d |  |
| 41 |  | Получение первых инфраструктурных мощностей | 72.5d | 2026-05-14 A | 2026-10-30 | 38 | 10% | 125d | finish no earlier than 2026-10-30 |
| 42 | 1.2.5 | **Реализовать SQB.Infra – проект аппаратного окружения серверов для хранения данных и исполнения моделей – приоритетный проект.** | 160d? | 2026-07-31 | 2027-03-12 |  |  | 10d |  |
| 43 |  | Решение о ресурсах реализации SQB.Infra (внутренние / внешние / подрядчики / тендер). | 10d | 2026-07-31 | 2026-08-14 | 38 |  | 10d |  |
| 44 |  | Определение объёма задачи с учётом UzInfoCom | 20d | 2026-08-14 | 2026-09-11 | 43 |  | 10d |  |
| 45 |  | Постановка задачи на инфраструктуру, проведение тендера по выбору исполнителя. | 40d | 2026-09-11 | 2026-11-06 | 44 |  | 50d |  |
| 46 |  | Реализация SQB.Infra: MVP | 45d | 2026-11-06 | 2027-01-08 | 45 |  | 55d |  |
| 47 |  | Пилотирование, результаты | 20d | 2027-01-08 | 2027-02-05 | 46 |  | 55d |  |
| 48 |  | SQB.Infra готова в объёме MVP | 0d | 2027-02-05 | 2027-02-05 | 47 |  | 55d |  |
| 49 | 1.2.5.7 | **Реализовать корпоративную среду исполнения моделей (SQB.AI) – приоритетный проект.** | 110d? | 2026-09-11 | 2027-02-12 |  |  | 10d |  |
| 50 |  | Решение о ресурсах реализации платформы исполнения SQB.AI (внутренние/внешние/подрядчики/тендер). | 5d | 2026-09-11 | 2026-09-18 | 44 |  | 10d |  |
| 51 |  | Постановка задачи на среду исполнения моделей (приоритетно – внутри SQB.Infra), проведение тендера по выбору исполнителя. | 45d | 2026-09-18 | 2026-11-20 | 50 |  | 40d |  |
| 52 |  | Реализация среды исполнения моделей | 45d | 2026-11-20 | 2027-01-22 | 51 |  | 49d |  |
| 53 |  | Пилотирование, результаты | 15d | 2027-01-22 | 2027-02-12 | 52 |  | 49d |  |
| 54 |  | SQB.AI готова в объёме MVP | 1d? | 2026-11-20 | 2026-11-23 | 53 |  |  |  |
| 55 |  | Разработка и внедрение комплекса инфраструктурных метрик | 25d | 2026-12-04 | 2027-01-08 | 45, 51, 62 |  | 30d |  |
| 56 |  | Внедрение SLA (Service Level Agreement) для ключевых платформенных решений Банка на основе стандартов ITSM и ISO | 45d | 2027-01-08 | 2027-03-12 | 55 |  | 30d |  |
| 57 | 1.3 | **ИНСТРУМЕНТЫ И МОДЕЛИ** | 180.12d? | 2026-07-31 A | 2027-04-11 |  | 4% | 9.88d |  |
| 58 | 1.3.1 | **Реализация корпоративной Базы знаний (ключевой проект)** | 130.12d? | 2026-07-31 | 2027-01-31 |  |  | 0d |  |
| 59 |  | Определение технического стека на 2026 для корпоративной базы знаний. | 30d | 2026-07-31 | 2026-09-11 | 38 |  | 0d | start no earlier than 2026-04-13 |
| 60 |  | Определение объёмов и календаризации инфраструктурных потребностей | 5d | 2026-09-11 | 2026-09-18 | 59 |  | 0d |  |
| 61 |  | Решение о ресурсах реализации SQB.Infra (внутренние / внешние / подрядчики / тендер). | 10d | 2026-09-18 | 2026-10-02 | 60 |  | 0d |  |
| 62 |  | Постановка задачи на среду исполнения моделей (приоритетно – внутри SQB.Infra), проведение тендера по выбору исполнителя. | 45d | 2026-10-02 | 2026-12-04 | 50, 61 |  | 0d |  |
| 63 |  | Реализация Репозитория моделей и инструментов | 40d | 2026-12-04 | 2027-01-29 | 62 |  | 0d |  |
| 64 |  | Реализация Библиотеки бизнес-знаний | 40d | 2026-12-04 | 2027-01-29 | 62 |  | 0d | finish no earlier than 2026-11-10 |
| 65 |  | Реализация Библиотеки знаний о данных | 40d | 2026-12-04 | 2027-01-29 | 62 |  | 16.38d | finish no earlier than 2026-11-16 |
| 66 |  | Реализация Репозитория кода | 40d | 2026-12-04 | 2027-01-29 | 62 |  | 29d | finish no earlier than 2026-11-23 |
| 67 |  | Реализация Библиотеки проектных знаний | 40d | 2026-12-04 | 2027-01-29 | 62 |  | 40d | finish no earlier than 2026-11-30 |
| 68 |  | Организация процедур владения знаниями (наполнения, актуализации) корпоративной базы знаний, на всех этапах цикла работы с данными. | 75d | 2026-10-02 | 2027-01-15 | 62SS |  | 70d |  |
| 69 |  | Корпоративная база знаний готова в объёме MVP | 6.25d? | 2027-01-25 | 2027-01-31 | 66, 65, 63, 64 |  |  |  |
| 70 | 1.3.2 | **Создать и запустить центр инструментальной компетенции Банка.** | 105.12d? | 2026-11-13 A | 2027-04-11 |  | 18% | 9.88d |  |

| ID | WBS | Task | Duration | Start | Finish | Predecessors | Complete | Total float | Constraint |
| --- | --- | --- | --- | --- | --- | --- | --- | --- | --- |
| 71 |  | Ввести в контур Банка open source инструменты: библиотеки, модели, компоненты, знания. Обеспечить их доступность через Библиотеку. | 15d | 2027-01-29 | 2027-02-19 | 63 |  | 0d |  |
| 72 |  | Развернуть корпоративный портал заказа инструментов. | 64d | 2026-11-13 A | 2027-04-08 | 71 | 47% | 7.38d | finish no earlier than 2027-02-11 |
| 73 |  | Организовать процесс верификации информации об инструментах и моделях в Базе знаний. | 30d | 2027-01-29 | 2027-03-12 | 71SS |  | 30d | finish no earlier than 2027-02-08 |
| 74 |  | Разработать и внедрить репозиторий датасетов: импортированных внешних, публичных, внутренних открытых, внутренних sensitive. | 25d | 2027-01-29 | 2027-03-05 | 65 |  | 16.38d |  |
| 75 |  | Обеспечить доступность датасетов для реализации модельной функции | 15d | 2027-03-05 | 2027-03-26 | 74 |  | 16.38d |  |
| 76 |  | Обеспечить переиспользование компонент моделей внутри Банка. | 15d | 2027-03-18 | 2027-04-08 | 72FF |  | 7.38d |  |
| 77 |  | Реализован центр инструментальной компетенции Банка | 4.5d? | 2027-04-07 | 2027-04-11 | 76, 74, 72, 71, 75 |  |  |  |
| 78 | 1.3.3 | **Организовать бизнес-функцию управления модельными рисками и валидации моделей (с калибровкой и допустимыми значениями рисков).** | 151d? | 2026-08-14 | 2027-03-15 |  |  | 29d |  |
| 79 |  | Создание структурного подразделеня управления валидации и управления МР | 25d | 2026-08-14 | 2026-09-18 | 101 |  | 145d |  |
| 80 |  | Подбор специалистов | 15d | 2026-08-28 | 2026-09-18 | 79FF |  | 155d | finish no earlier than 2026-07-30 |
| 81 |  | Утвердить Model Risk Management Framework (MRMF) | 10d | 2026-09-18 | 2026-10-02 | 79 |  | 145d | finish no earlier than 2026-08-10 |
| 82 |  | Создание реестра моделей (Model Inventory) и классификации моделей | 10d | 2027-01-15 | 2027-01-29 | 66FF |  | 29d |  |
| 83 | 1.3.3.5 | **Разработка пайплайнов валидации для моделей различных типов** | 10d | 2027-01-29 | 2027-02-12 |  |  | 29d |  |
| 84 |  | Model Development | 10d | 2027-01-29 | 2027-02-12 | 82 |  | 39d |  |
| 85 |  | Model Documentation | 10d | 2027-01-29 | 2027-02-12 | 82 |  | 39d |  |
| 86 |  | Independent Validation | 10d | 2027-01-29 | 2027-02-12 | 82 |  | 39d |  |
| 87 |  | Approval | 10d | 2027-01-29 | 2027-02-12 | 82 |  | 39d |  |
| 88 |  | Implementation | 10d | 2027-01-29 | 2027-02-12 | 82 |  | 39d |  |
| 89 |  | Monitoring | 10d | 2027-01-29 | 2027-02-12 | 82 |  | 39d |  |
| 90 |  | Recalibration | 10d | 2027-01-29 | 2027-02-12 | 82 |  | 39d |  |
| 91 |  | Retirement | 10d | 2027-01-29 | 2027-02-12 | 82 |  | 29d |  |
| 92 |  | Утверждение метрик валидации для моделей (кредитных, предиктивных, генеративных) | 10d | 2027-02-12 | 2027-02-26 | 82, 91 |  | 29d |  |
| 93 |  | Утверждение целевых метрик валидации | 5d | 2027-02-26 | 2027-03-05 | 83, 92 |  | 29d |  |
| 94 |  | Утверждение процедур модельного аудита | 5d | 2027-03-05 | 2027-03-12 | 83, 93 |  | 29d |  |
| 95 |  | Реализована функция модельной валидации | 1d? | 2027-03-12 | 2027-03-15 | 94 |  | 29d |  |
| 96 | 1.4 | **ЛЮДИ И КОМПЕТЕНЦИИ** | 195.88d? | 2026-04-06 A | 2027-01-04 |  | 13% | 79d |  |
| 97 |  | Провести оценку текущего уровня (асессмент) квалификации текущих разработчиков, инженеров, специалистов Банка | 25.88d | 2026-04-06 A | 2026-05-11 A |  | 100% |  | finish no earlier than 2026-05-11 |
| 98 |  | Сфоримровать перечень специальностей, гэп-анализ соответствия кадрового обечпечения | 10d | 2026-05-11 A | 2026-05-22 A | 97 | 100% |  |  |
| 99 |  | Сформировать планы, программы обучения и развития DS/AI/ML. | 49.88d | 2026-05-25 A | 2026-07-31 | 97, 98 | 29% | 84d | finish no earlier than 2026-07-31 |
| 100 |  | Сформировать и организовать обновление портфеля обучающих программ по основным классам AI/ML задач в Банке. | 25d | 2026-06-30 A | 2026-08-04 A | 99 | 100% |  |  |
| 101 |  | Сформировать обучающие программы по базовым навыкам постановки и реализации задач в области DS/AI для бизнес-аналитиков ("разработчик AI продуктов", "архитектор данных", "инженер знаний" и др.) | 10d | 2026-07-31 | 2026-08-14 | 99 |  | 84d | finish no earlier than 2026-06-22 |
| 102 |  | Провести обучающие программы по базовым навыкам постановки и реализации задач в области DS/AI для бизнес-аналитиков ("разработчик AI продуктов", "архитектор данных", "инженер знаний" и др.) | 91d | 2026-06-01 | 2026-10-05 |  |  |  |  |
| 103 |  | Организовать и провести массовое обучение цифровым компетенциям (экспертов, менеджеров, директоров). | 90d | 2026-08-04 | 2026-12-08 | 100 |  | 97d |  |
| 104 | 1.4.8 | **Провести или актуализировать выделение функциональных ролей, необходимых в рамках проекта по AI трансформации:** | 20d | 2026-08-04 | 2026-09-01 | 100 |  | 168d |  |
| 105 |  | AI-лидер: Описание роли, функциональные обязанности, полномочия, должностные инструкции, матричные KPI | 3d | 2026-08-04 | 2026-08-07 | 98 |  | 168d |  |
| 106 |  | Data-сайентист: Описание роли, функциональные обязанности, полномочия, должностные инструкции, матричные KPI | 3d | 2026-08-07 | 2026-08-12 | 98, 105 |  | 168d |  |
| 107 |  | ML-разработчик: Описание роли, функциональные обязанности, полномочия, должностные инструкции, матричные KPI | 3d | 2026-08-12 | 2026-08-17 | 98, 106 |  | 168d |  |
| 108 |  | Data-сайентист: Описание роли, функциональные обязанности, полномочия, должностные инструкции, матричные KPI | 3d | 2026-08-17 | 2026-08-20 | 98, 107 |  | 168d |  |
| 109 |  | Data-инженер: Описание роли, функциональные обязанности, полномочия, должностные инструкции, матричные KPI | 3d | 2026-08-20 | 2026-08-25 | 98, 108 |  | 168d |  |
| 110 |  | Аналитик данных: Описание роли, функциональные обязанности, полномочия, должностные инструкции, матричные KPI | 3d | 2026-08-25 | 2026-08-28 | 98, 109 |  | 168d |  |
| 111 |  | Бизнес-аналитик: Описание роли, функциональные обязанности, полномочия, должностные инструкции, матричные KPI | 2d | 2026-08-28 | 2026-09-01 | 98, 110 |  | 168d |  |
| 112 |  | Создать пространство для обучения и нетворкинга сотрудников, вовлечённых в AI-трансформацию. | 170d | 2026-05-11 | 2027-01-04 | 97 |  | 79d |  |
| 113 |  | Провести повтороный асессмент и кластеризацию кадров Банка | 45d | 2026-10-06 | 2026-12-08 | 103FF |  | 97d |  |
| 114 |  | Завершение программы развития цифровых навыков в Банке | 1d? | 2026-11-16 | 2026-11-16 | 113 |  |  |  |
| 115 |  | Организовать присутствие Банка в высших учебных заведениях Узбекистана, для пропаганды ценностей Банка + привлечения талантов, продвижения Банка, как цифрового. | 45d | 2026-05-25 | 2026-07-24 | 98 |  | 194.88d |  |
| 116 | 1.5 | **ПРОЦЕССЫ** | 319.88d? | 2026-02-02 A | 2027-04-23 |  | 18% | 0d |  |
| 117 | 1.5.1 | **Process review** | 319.88d | 2026-02-02 A | 2027-04-23 |  | 7% | 0d |  |
| 118 |  | Завершить сбор и описание данных, источников данных, мест хранения и трансформации данных, используемых в процессах. | 216.88d | 2026-02-02 A | 2026-12-01 |  | 25% | 0d | finish no earlier than 2026-12-01 |
| 119 |  | Завершить описание процессов каждого бизнес-подразделения. | 216.88d | 2026-02-02 | 2026-12-01 | 118SS |  | 103d | finish no earlier than 2026-12-01 |
| 120 |  | Провести review процессов, определить дублирующие, «тупиковые», «кольцевые», провести оптимизацию. | 238.88d | 2026-02-02 | 2026-12-31 | 119SS |  | 81d | finish no earlier than 2026-12-31 |
| 121 |  | Синхронизация с DataLake с базой знаний | 60d | 2027-01-29 | 2027-04-23 | 120FF, 64 |  | 0d |  |
| 122 |  | Оптимизация и цифровизация процессов завершена | 0d | 2027-04-23 | 2027-04-23 | 121 |  |  |  |
| 123 | 1.5.2 | **Форимрование AI-лидеров** | 122.38d? | 2026-04-13 A | 2026-09-30 |  | 43% | 146.5d |  |
| 124 |  | Определить AI-лидера каждого подразделения, либо блока | 54.88d | 2026-04-13 A | 2026-06-26 A | 97FF | 100% |  | finish no earlier than 2026-06-26 |
| 125 |  | Повышение квалификации AI-лидеров | 75d | 2026-05-25 A | 2026-09-30 | 124 | 20% | 146.5d |  |
| 126 |  | Провести обучение ключевых сотрудников, ответственных за улучшение процессов оценке эффективности, гэп-анализу, расчёту кейсов. | 30d | 2026-08-19 | 2026-09-30 | 124, 125FF |  | 146.5d |  |
| 127 |  | В каждом блоке или департаменте работает AI-лидер | 1d? | 2026-07-20 | 2026-07-20 | 126, 125, 124 |  |  |  |
| 128 | 1.5.3 | **Инициативы и проекты** | 254.88d | 2026-03-09 A | 2027-02-26 |  | 57% | 40d |  |
| 129 |  | Сформировать офис AI-трансформации Банка, определить метрики оценки зрелости, эффективности, организовать систему мониторинга. | 61.88d | 2026-04-06 A | 2026-06-30 |  | 50% | 0d | finish no earlier than 2026-06-30 |
| 130 |  | Сформировать пул инициатив по изменению и улучшению процессов с применением технологий AI. | 15d | 2026-04-27 A | 2026-05-15 A | 129 | 100% |  |  |
| 131 |  | Провести выделение пересекающихся инициатив, а также объединение сходных для достижения общего эффекта. | 15d | 2026-05-18 A | 2026-06-05 A | 130 | 100% |  |  |
| 132 |  | Организовать репозиторий идей в Базе знаний с целью переиспользования. | 20d | 2027-01-29 | 2027-02-26 | 129, 67, 64 |  | 40d |  |
| 133 |  | Выстроить управление проектами AI по решению приоритетных бизнес-задач | 30d | 2026-06-09 A | 2026-08-06 | 129, 131 | 10% | 186d | finish no earlier than 2026-07-21 |
| 134 |  | Организовано управление AI трансформацией | 0d | 2026-08-06 | 2026-08-06 | 133 |  |  |  |
| 135 | 1.5.3.7 | **Имиджевые быстрые проекты** | 38.88d | 2026-03-09 A | 2026-04-30 A |  | 100% |  |  |
| 136 |  | Выбор базовой LLM с поддержкой узбекского языка | 38.88d | 2026-03-09 A | 2026-04-30 A |  | 100% |  | finish no earlier than 2026-04-30 |
| 137 | 1.5.4 | **Продуктовый подход** | 106d | 2026-07-31 | 2026-12-28 |  |  | 84d |  |
| 138 |  | Выбор и развитие владельцев продуктов | 15d | 2026-07-31 | 2026-08-21 | 101FF+5d |  | 84d |  |
| 139 |  | Организовать продуктовые команды в бизнес-подразделениях на основе метрик эффективности. | 45d | 2026-08-21 | 2026-10-23 | 138 |  | 84d |  |
| 140 |  | Провести обучение и соответствие программам развитие product ownews | 25d | 2026-09-18 | 2026-10-23 | 139FF |  | 84d |  |

| ID | WBS | Task | Duration | Start | Finish | Predecessors | Complete | Total float | Constraint |
| --- | --- | --- | --- | --- | --- | --- | --- | --- | --- |
| 141 |  | Разработать и внедрить процесс создания, оценки гипотез, выделения ресурсов под успешные гипотезы, бизнес-планирования и корректировок бюджета, реализации гипотез и оценки результатов. | 46d | 2026-10-23 | 2026-12-28 | 140 |  | 84d |  |
| 142 |  | Разработать и внедрить прозрачную методологию «Призового фонда» – финансовой мотивации продуктовых инициатив. | 25d | 2026-11-23 | 2026-12-28 | 141FF, 139 |  | 84d |  |
| 143 |  | Организовать формирование и функционирование кросс-блочных DS/AI команд с ролями AI-лидера от бизнеса, AI как драйвера и IT как сервиса. | 50d | 2026-10-19 | 2026-12-28 | 141FF, 140FF, 138 |  | 84d |  |
| 144 |  | Реализован продуктовый поход в объёме MVP | 0d | 2026-12-28 | 2026-12-28 | 143 |  |  |  |
| 145 | 1.6 | **МЫШЛЕНИЕ И КУЛЬТУРА** | 165d | 2026-05-11 A | 2026-12-28 |  | 6% | 84d |  |
| 146 |  | Сформировать и организовать функционирование DS&AI Community Банка. | 15d | 2026-05-11 A | 2026-06-01 A | 97 | 100% |  |  |
| 147 |  | Создать концепт "максимально возможно удобные и комфортные условия для работы «В офисе лучше, чем дома». | 30d | 2026-06-01 | 2026-07-13 | 146 |  | 84d | finish no earlier than 2026-07-10 |
| 148 |  | Переформатировать офисное пространство для SQB.AI, SQB.Data, SQB.Infra. | 120d | 2026-07-13 | 2026-12-28 | 147 |  | 84d |  |
| 149 |  | Организовать популяризацию культуры работы с данными и аналитикой. | 44d | 2026-06-01 A | 2026-07-31 | 146 | 1% | 190d |  |
| 150 |  | Организовать и поддерживать пространство для обучения и нетворкинга сотрудников, вовлечённых в AI-трансформацию. | 15d | 2026-06-22 | 2026-07-13 | 147FF |  | 189d |  |
| 151 |  | Обеспечить участие в максимальном количестве внешних мероприятий для повышения нетворка сотрудников, повышения их квалификации и продвижения Банка. | 10d | 2026-07-13 | 2026-07-27 | 150 |  | 194d |  |
| 152 |  | Разработать и внедрить механизмы поощрения экспертов с высоким рейтингом (благодарности, leaderboards, achieves, специальный мерч). | 44d | 2026-06-01 A | 2026-07-31 | 146 | 5% | 175d |  |
| 153 |  | Привлекать экспертов для формирования дайджестов с вопросами в целях получения широкой палитры мнений. | 15d | 2026-07-31 | 2026-08-21 | 150, 152 |  | 175d |  |
| 154 | 1.7 | **ЛИДЕРСТВО** | 101d | 2026-05-18 A | 2026-10-05 |  | 12% | 143.88d |  |
| 155 |  | Утвердить методологию расчёта и регулярной оценки индекса AI-зрелости для подразделений Банка. | 15d | 2026-05-18 A | 2026-06-05 A | 130 | 100% |  |  |
| 156 |  | Установить для руководителей подразделений, директоров и топ-менеджмента долю KPI по выполнению целей по AI-трансформации не менее 25% от общего объёма KPI. | 26d | 2026-06-08 | 2026-07-13 | 155 |  | 203.88d |  |
| 157 |  | Установить мотивационную долю KPI при успешном выполнении целей по AI-трансформации в 50% от общего объёма KPI. | 28.5d | 2026-06-01 A | 2026-07-13 | 155 | 9% | 143.88d | finish no earlier than 2026-07-13 |
| 158 |  | Сформировать и реализовать программу участия топ-менеджмента банка в мероприятиях по продвижению AI-трансформации. | 15d | 2026-07-14 | 2026-08-03 | 157 |  | 188.88d |  |
| 159 |  | Разработка внутреннего кодекса этики AI и обеспечение его работы | 60d | 2026-07-14 | 2026-10-05 | 157 |  | 143.88d |  |

## Version 2 (saved 2026-06-24)

Note of the change: Update project plan XML

Last finish stays 2027-04-23.

Changed:

| ID | Task | Complete |
| --- | --- | --- |
| 3 | **Финализация стратегии управления данными** | 100% → 99% |

## Version 3 (saved 2026-06-26)

Note of the change: Update project plan XML

Last finish stays 2027-04-23. Complete tasks 17 → 18.

Added:

| ID | Task | Duration | Start | Finish | Predecessors | Constraint | Resources |
| --- | --- | --- | --- | --- | --- | --- | --- |
| 137 | **AI-проект: Управление документооборотом и поручениями** | 66d | 2026-05-29 A | 2026-08-31 |  |  |  |
| 138 | Развёртывание LLM в SQB.Infra | 10d | 2026-06-04 A | 2026-06-18 A | 136, 41 |  | SQB.AI |
| 139 | Агрегация документации Банка | 16d | 2026-05-29 | 2026-06-22 | 41 |  | Администрация |
| 140 | Формирование RAG | 15d | 2026-06-19 | 2026-07-10 | 139 |  | Администрация |
| 141 | Реализация front-end | 15d | 2026-07-10 | 2026-07-31 | 140 |  | SQB.AI |
| 142 | Реализация back-end | 20d | 2026-06-19 | 2026-07-17 | 140SS |  | SQB.AI |
| 143 | Интгерация с EDO | 15d | 2026-07-17 A | 2026-08-07 | 142 |  | SQB.IT |
| 144 | Формирование бибилотеки промптов | 5d | 2026-07-31 | 2026-08-07 | 141, 139 |  | Администрация |
| 145 | Пилотирование | 6d | 2026-08-07 | 2026-08-17 | 144, 143, 141 |  | Администрация |
| 146 | Запуск MVP документооборота и контроля поручений в формате MVP | 11d | 2026-08-14 | 2026-08-31 | 145 |  | Администрация |
| 147 | Коррекция банковских документов, уточнение RAG и промптов для управления поручениями | 30d | 2026-08-31 | 2026-10-12 | 146 | finish no earlier than 2026-09-30 | Администрация |
| 148 | **AI-проект: Ассистент Legal councel** | 91.88d? | 2026-08-01 | 2026-12-08 | 136 |  |  |
| 149 | Развёртывание LLM в SQB.Infra | 10d | 2026-11-06 | 2026-11-20 | 136, 41, 46SS |  | SQB.AI |
| 150 | Сбор юрилдической документации Банка | 52d | 2026-08-01 | 2026-10-12 |  |  | Юридический департамент |
| 151 | Агрегация документации Банка и интеграция с Lex.Uz | 5d | 2026-10-30 | 2026-11-06 | 41, 150 |  | SQB.AI |
| 152 | Формирование RAG | 7d | 2026-11-06 | 2026-11-17 | 151 |  | SQB.AI |
| 153 | Реализация front-end | 7d | 2026-11-17 | 2026-11-26 | 152 |  | SQB.AI |
| 154 | Реализация back-end | 7d | 2026-11-06 | 2026-11-17 | 152SS | finish no earlier than 2026-10-30 | SQB.AI |
| 155 | Формирование бибилотеки промптов | 5d | 2026-11-26 | 2026-12-03 | 153 |  | SQB.AI |
| 156 | Пилотирование | 7d | 2026-11-26 | 2026-12-07 | 153 | finish no earlier than 2026-11-20 | Юридический департамент |
| 157 | Запуск MVP ассистента юриста в формате MVP | 1d? | 2026-12-07 | 2026-12-08 | 156 |  | Юридический департамент |
| 158 | Коррекция банковских документов, уточнение RAG и промптов для Ассистент Legal councel | 29d | 2027-01-08 | 2027-02-18 | 157, 167 |  | Юридический департамент |
| 159 | **Реализация Эластичного поиска для базы знаний** | 45d? | 2026-11-06 | 2027-01-08 |  |  |  |
| 160 | Развёртывание LLM в SQB.Infra | 10d | 2026-11-06 | 2026-11-20 | 136, 41, 46SS |  | SQB.IT |
| 161 | Агрегация документации Банка в базе знаний | 5d | 2026-12-04 | 2026-12-11 | 41, 62 | finish no earlier than 2026-09-28 | SQB.AI |
| 162 | Формирование RAG | 10d | 2026-12-11 | 2026-12-25 | 161 |  | SQB.AI |
| 163 | Реализация front-end | 7d | 2026-12-11 | 2026-12-22 | 161 |  |  |
| 164 | Реализация back-end | 7d | 2026-12-22 | 2026-12-31 | 163 |  |  |
| 165 | Формирование бибилотеки промптов | 5d | 2026-12-22 | 2026-12-29 | 163 |  | SQB.AI |
| 166 | Пилотирование | 7d | 2026-12-29 | 2027-01-07 | 165 |  | SQB.AI |
| 167 | Запуск эластчиного поиска в формате MVP | 1d? | 2027-01-07 | 2027-01-08 | 166 |  | SQB.AI |

Changed:

| ID | Task | Start | Finish | Duration | Complete | Total float |
| --- | --- | --- | --- | --- | --- | --- |
| 1 | **AI ТРАНСФОРМАЦИЯ SQB** |  |  |  | 13% → 14% |  |
| 3 | **Финализация стратегии управления данными** |  | 2026-06-09 A |  | 99% → 100% | 0d → none |
| 96 | **ЛЮДИ И КОМПЕТЕНЦИИ** |  |  |  | 13% → 18% |  |
| 99 | Сформировать планы, программы обучения и развития DS/AI/ML. |  | 2026-07-31 A |  | 29% → 100% | 84d → none |
| 100 | Сформировать и организовать обновление портфеля обучающих программ по основным классам AI/ML задач в Банке. |  | 2026-08-04 A → 2026-08-18 (+14d) |  | 100% → 70% | none → 87.75d |
| 103 | Организовать и провести массовое обучение цифровым компетенциям (экспертов, менеджеров, директоров). | 2026-08-04 → 2026-08-18 (+14d) | 2026-12-08 → 2026-12-22 (+14d) |  |  | 97d → 87.75d |
| 104 | **Провести или актуализировать выделение функциональных ролей, необходимых в рамках проекта по AI трансформации:** | 2026-08-04 → 2026-08-18 (+14d) | 2026-09-01 → 2026-09-15 (+14d) |  |  | 168d → 158.75d |
| 105 | AI-лидер: Описание роли, функциональные обязанности, полномочия, должностные инструкции, матричные KPI | 2026-08-04 → 2026-08-18 (+14d) | 2026-08-07 → 2026-08-21 (+14d) |  |  | 168d → 158.75d |
| 106 | Data-сайентист: Описание роли, функциональные обязанности, полномочия, должностные инструкции, матричные KPI | 2026-08-07 → 2026-08-21 (+14d) | 2026-08-12 → 2026-08-26 (+14d) |  |  | 168d → 158.75d |
| 107 | ML-разработчик: Описание роли, функциональные обязанности, полномочия, должностные инструкции, матричные KPI | 2026-08-12 → 2026-08-26 (+14d) | 2026-08-17 → 2026-08-31 (+14d) |  |  | 168d → 158.75d |
| 108 | Data-сайентист: Описание роли, функциональные обязанности, полномочия, должностные инструкции, матричные KPI | 2026-08-17 → 2026-08-31 (+14d) | 2026-08-20 → 2026-09-03 (+14d) |  |  | 168d → 158.75d |
| 109 | Data-инженер: Описание роли, функциональные обязанности, полномочия, должностные инструкции, матричные KPI | 2026-08-20 → 2026-09-03 (+14d) | 2026-08-25 → 2026-09-08 (+14d) |  |  | 168d → 158.75d |
| 110 | Аналитик данных: Описание роли, функциональные обязанности, полномочия, должностные инструкции, матричные KPI | 2026-08-25 → 2026-09-08 (+14d) | 2026-08-28 → 2026-09-11 (+14d) |  |  | 168d → 158.75d |
| 111 | Бизнес-аналитик: Описание роли, функциональные обязанности, полномочия, должностные инструкции, матричные KPI | 2026-08-28 → 2026-09-11 (+14d) | 2026-09-01 → 2026-09-15 (+14d) |  |  | 168d → 158.75d |
| 113 | Провести повтороный асессмент и кластеризацию кадров Банка | 2026-10-06 → 2026-10-20 (+14d) | 2026-12-08 → 2026-12-22 (+14d) |  |  | 97d → 87.75d |
| 116 | **ПРОЦЕССЫ** |  |  |  | 18% → 16% |  |
| 128 | **Инициативы и проекты** |  |  | 254.88d → 254.88d? | 57% → 27% |  |
| 129 | Сформировать офис AI-трансформации Банка, определить метрики оценки зрелости, эффективности, организовать систему мониторинга. |  |  |  | 50% → 80% |  |
| 135 | **Имиджевые быстрые проекты** |  | 2026-04-30 A → 2027-02-18 (+294d) | 38.88d → 248.88d? | 100% → 14% | none → 46d |
| 176 | **МЫШЛЕНИЕ И КУЛЬТУРА** |  |  |  | 6% → 20% |  |
| 180 | Организовать популяризацию культуры работы с данными и аналитикой. |  |  |  | 1% → 95% |  |
